# dailyMarket-2

How a schedule from MS Project changed from version to version. A marks actual dates.

## Version 1 (saved 2010-05-20)

Note of the change: El project

| ID | WBS | Task | Duration | Start | Finish | Predecessors | Total float | Constraint |
| --- | --- | --- | --- | --- | --- | --- | --- | --- |
| 1 | 1.0 | **Proyecto DailyMarket** | 169d | 2010-04-09 | 2010-10-29 |  | 0d | must start on 2010-04-09 |
| 2 | 1.1 | **Fase Estructuración** | 18d | 2010-04-09 | 2010-04-30 |  | 0d |  |
| 3 |  | Definición de propuestas | 6d | 2010-04-09 | 2010-04-16 |  | 0d | finish no earlier than 2010-04-16 |
| 4 |  | Especificación de funcionalidades de la propuesta seleccionada | 6d | 2010-04-17 | 2010-04-23 | 3 | 0d | must start on 2010-04-17 |
| 5 |  | Elaboración del alcance de la propuesta elegida | 6d | 2010-04-17 | 2010-04-23 | 3 | 0d | must start on 2010-04-17 |
| 6 |  | Elaboración de matriz de responsabilidades y roles | 6d | 2010-04-24 | 2010-04-30 | 4, 5 | 10d | finish no earlier than 2010-04-30 |
| 7 | 1.2 | **Fase Planificación** | 18d | 2010-05-01 | 2010-05-21 | 2 | 1d |  |
| 8 |  | Elaboración de la carta Gantt | 6d | 2010-05-01 | 2010-05-07 | 2 | 10d | finish no earlier than 2010-05-07 |
| 9 |  | Elaboración de la WBS | 2d | 2010-05-08 | 2010-05-10 | 2 | 8d | finish no earlier than 2010-05-10 |
| 10 |  | Elaboración Red y cronograma | 3d | 2010-05-11 | 2010-05-13 | 8, 9 | 8d | start no earlier than 2010-05-11 |
| 11 |  | Definición de alcances , limites y supuestos | 3d | 2010-05-11 | 2010-05-13 | 2 | 8d | start no earlier than 2010-05-11 |
| 12 |  | Definir plataforma Tecnologica | 2d | 2010-05-14 | 2010-05-15 | 2 | 6d | start no earlier than 2010-05-14 |
| 13 |  | Elaboración de factibilidad Economica | 6d | 2010-05-15 | 2010-05-21 | 2 | 0d | must start on 2010-05-15 |
| 14 |  | Elaborar matriz comunicacional | 6d | 2010-05-15 | 2010-05-21 | 2 | 0d | must start on 2010-05-15 |
| 15 |  | Definir Riesgos | 6d | 2010-05-15 | 2010-05-21 | 2 | 0d | must start on 2010-05-15 |
| 16 | 1.3 | **Fase Ejecución** | 127d | 2010-05-22 | 2010-10-22 | 7 | 1d |  |
| 17 | 1.3.1 | **Fase 0: Inicio del proyecto.** | 6d | 2010-05-22 | 2010-05-28 | 7 | 0d |  |
| 18 |  | Elaboración definitiva de la matriz de responsabilidades y roles | 2d | 2010-05-22 | 2010-05-24 | 7 | 4d | finish no earlier than 2010-05-24 |
| 19 |  | Elaborar PPT de la Presentación Comercial | 5d | 2010-05-24 | 2010-05-28 | 7 | 0d | start no earlier than 2010-05-24 |
| 20 |  | Capacitar personal en UML | 5d | 2010-05-24 | 2010-05-28 | 7 | 0d | start no earlier than 2010-05-24 |
| 21 | 1.3.2 | **Fase 1: Análisis de infraestructura de la solución** | 7d | 2010-05-29 | 2010-06-05 | 17 | 0d |  |
| 22 |  | Elaborar Análisis de Infraestructura de Comunicaciones | 2d | 2010-05-30 | 2010-05-31 | 17 | 23d | start no earlier than 2010-05-29 |
| 23 |  | Elaborar Análisis Infraestructura de Hardware y Software (Puestos) | 3d | 2010-05-30 | 2010-06-01 | 17 | 18d | start no earlier than 2010-05-30 |
| 24 |  | Elaborar Análisis de Infraestructura de Hardware y Software (Servidores) | 2d | 2010-05-31 | 2010-06-01 | 17 | 20d | start no earlier than 2010-05-31 |
| 25 |  | Analizar Infraestructura de Hardware y Software (Entorno Desarrollo y Testing) | 2d | 2010-05-29 | 2010-05-31 | 17 | 0d | must start on 2010-05-29 |
| 26 |  | Analizar Implementación de Infraestructura en puestos | 2d | 2010-06-02 | 2010-06-03 | 23 | 18d | finish no earlier than 2010-06-03 |
| 27 |  | Actualizar documentos de Infraestructura de HW y SW | 2d | 2010-06-04 | 2010-06-05 | 23, 24, 25, 26 | 18d | start no earlier than 2010-06-04 |
| 28 | 1.3.3 | **Fase 2: Análisis Funcional** | 22d | 2010-06-07 | 2010-07-02 | 21 | 18d |  |
| 29 |  | Elaborar documento de reconocimiento | 1d | 2010-06-07 | 2010-06-07 | 21 | 18d | start no earlier than 2010-06-07 |
| 30 |  | Elaborar documento de requerimientos funcionales | 2d | 2010-06-08 | 2010-06-09 | 29 | 18d | start no earlier than 2010-06-08 |
| 31 |  | Elaborar la especificación de los requerimientos | 2d | 2010-06-10 | 2010-06-11 | 30 | 18d | finish no earlier than 2010-06-11 |
| 32 |  | Elaborar Modelo de dominio | 2d | 2010-06-11 | 2010-06-14 | 21 | 112d | start no earlier than 2010-06-11 |
| 33 |  | Desarrollar la matriz de trazabilidad de requerimientos | 1d | 2010-06-14 | 2010-06-14 | 31 | 18d | finish no earlier than 2010-06-14 |
| 34 | 1.3.3.6 | **Elaborar diagramas y especificación de casos de uso** | 16d | 2010-06-15 | 2010-07-02 | 33 | 8d |  |
| 35 |  | Elaborar Casos de uso Modulo de Accesos al Sistema | 5d | 2010-06-15 | 2010-06-19 | 33 | 19d | start no earlier than 2010-06-15 |
| 36 |  | Elaborar Casos de uso Modulo de Venta | 5d | 2010-06-15 | 2010-06-19 | 33 | 19d | finish no earlier than 2010-06-19 |
| 37 |  | Elaborar Casos de uso Modulo de Stock | 5d | 2010-06-15 | 2010-06-19 | 33 | 19d | finish no earlier than 2010-06-19 |
| 38 |  | Elaborar Casos de uso Modulo de Estadísticas e indicadores | 6d | 2010-06-21 | 2010-06-27 | 33 | 13d | start no earlier than 2010-06-20 |
| 39 |  | Elaborar Casos de uso Modulo de Reportes | 5d | 2010-06-28 | 2010-07-02 | 33 | 8d | start no earlier than 2010-06-28 |
| 40 |  | Elaborar Casos de uso Modulo de Simulador de Compras | 6d | 2010-06-21 | 2010-06-27 | 33 | 13d | start no earlier than 2010-06-20 |
| 41 |  | Elaborar Casos de uso Modulo de ABM | 6d | 2010-06-21 | 2010-06-27 | 33 | 13d | start no earlier than 2010-06-20 |
| 42 | 1.3.4 | **Fase 3: Diseño** | 14d | 2010-07-03 | 2010-07-16 | 34 | 0d |  |
| 43 |  | Elaborar diagrama de clases | 2d | 2010-07-03 | 2010-07-04 | 34 | 12d | finish no earlier than 2010-07-04 |
| 44 |  | Elaborar diagrama de entidad relación | 2d | 2010-07-03 | 2010-07-04 | 34 | 10d | finish no earlier than 2010-07-04 |
| 45 |  | Elaborar diccionario de datos | 2d | 2010-07-05 | 2010-07-06 | 44 | 10d | finish no earlier than 2010-07-06 |
| 46 |  | Elaborar diagrama componentes | 3d | 2010-07-05 | 2010-07-07 | 34 | 9d | start no earlier than 2010-07-05 |
| 47 |  | Elaborar diagrama de despliegue | 3d | 2010-07-08 | 2010-07-10 | 34 | 6d | start no earlier than 2010-07-08 |
| 48 |  | Elaborar documento de arquitectura de software | 2d | 2010-07-10 | 2010-07-11 | 34 | 5d | finish no earlier than 2010-07-11 |
| 49 |  | Diseñar interfaces | 6d | 2010-07-11 | 2010-07-16 | 34 | 0d | start no earlier than 2010-07-11 |
| 50 | 1.3.5 | **Fase 4: Construcción** | 60d | 2010-07-17 | 2010-10-01 | 42 | 0d |  |
| 51 | 1.3.5.1 | **Desarrollo del Modulo de Accesos al Sistema** | 6d | 2010-07-17 | 2010-07-23 | 42 | 0d |  |
| 52 |  | Desarrollar Apertura de cajas ( validación de huella digital ) | 3d | 2010-07-17 | 2010-07-20 | 42 | 62d | finish no earlier than 2010-07-20 |
| 53 |  | Desarrollar Cierre de cajas ( validación de huella digital) | 3d | 2010-07-17 | 2010-07-20 | 42 | 0d | must start on 2010-07-17 |
| 54 |  | Desarrollar Login de acuerdo al ROL | 3d | 2010-07-17 | 2010-07-20 | 42 | 0d | must start on 2010-07-17 |
| 55 |  | Realizar pruebas unitarias al modulo | 3d | 2010-07-21 | 2010-07-23 | 52, 53, 54 | 62d | start no earlier than 2010-07-21 |
| 56 | 1.3.5.2 | **Desarrollo del Modulo de Venta** | 6d | 2010-07-23 | 2010-07-30 | 42 | 57d |  |
| 57 |  | Desarrollar Registro de venta de producto ( Lector de código de barras ) | 4d | 2010-07-23 | 2010-07-28 | 42 | 57d | start no earlier than 2010-07-23 |
| 58 |  | Desarrollar Registro de pago-emisión de ticket | 4d | 2010-07-23 | 2010-07-28 | 42 | 57d | start no earlier than 2010-07-23 |
| 59 |  | Realizar pruebas unitarias al modulo | 2d | 2010-07-29 | 2010-07-30 | 57, 58 | 57d | start no earlier than 2010-07-29 |
| 60 | 1.3.5.3 | **Desarrollo del Modulo de Stock** | 6d | 2010-07-31 | 2010-08-06 | 42 |  |  |
| 61 |  | Desarrollar proceso Actualizar Stock | 2d | 2010-08-01 | 2010-08-03 | 42 | 0d | must start on 2010-08-01 |
| 62 |  | Desarrollar Envíos de Alertas | 2d | 2010-08-01 | 2010-08-03 | 42 | 0d | must start on 2010-08-01 |
| 63 |  | Desarrollar Controlar Stock para la generación de alertas | 2d | 2010-08-01 | 2010-08-03 | 42 | 0d | must start on 2010-08-01 |
| 64 |  | Realizar pruebas unitarias al modulo | 3d | 2010-08-04 | 2010-08-06 | 61, 62, 63 | 67d | start no earlier than 2010-08-04 |
| 65 | 1.3.5.4 | **Desarrollo del Modulo de Estadísticas e indicadores** | 11d | 2010-08-07 | 2010-08-20 | 42 | 40d |  |
| 66 |  | Desarrollar Seguimiento estadístico de articulos vendidos | 7d | 2010-08-07 | 2010-08-16 | 42 | 40d | finish no earlier than 2010-08-16 |
| 67 |  | Desarrollar Volumen de ventas | 7d | 2010-08-07 | 2010-08-16 | 42 | 40d | finish no earlier than 2010-08-16 |
| 68 |  | Desarrollar seguimiento de alertas generadas | 7d | 2010-08-07 | 2010-08-16 | 42 | 40d | finish no earlier than 2010-08-16 |
| 69 |  | Desarrollar seguimiento de empleados | 7d | 2010-08-07 | 2010-08-16 | 42 | 40d | finish no earlier than 2010-08-16 |
| 70 |  | Realizar pruebas unitarias al modulo | 4d | 2010-08-17 | 2010-08-20 | 66, 67, 68, 69 | 40d | start no earlier than 2010-08-17 |

| ID | WBS | Task | Duration | Start | Finish | Predecessors | Total float | Constraint |
| --- | --- | --- | --- | --- | --- | --- | --- | --- |
| 71 | 1.3.5.5 | **Desarrollar Modulo de Reportes** | 20d | 2010-08-21 | 2010-09-16 | 42 | 20d |  |
| 72 |  | Desarrollar reportes de estadísticas | 11d | 2010-08-21 | 2010-09-03 | 42 | 24d | finish no earlier than 2010-09-03 |
| 73 |  | Desarrollar lista de precios | 11d | 2010-08-21 | 2010-09-03 | 42 | 24d | finish no earlier than 2010-09-03 |
| 74 |  | Realizar pruebas unitarias al modulo | 5d | 2010-09-10 | 2010-09-16 | 72, 73 | 20d | start no earlier than 2010-09-10 |
| 75 | 1.3.5.6 | **Desarrollar Modulo de Simulador de Compras** | 11d | 2010-09-18 | 2010-10-01 | 42 | 8d |  |
| 76 |  | Desarrollar Simulador de compras | 7d | 2010-09-18 | 2010-09-27 | 42 | 8d | finish no earlier than 2010-09-27 |
| 77 |  | Realizar pruebas unitarias al modulo | 4d | 2010-09-28 | 2010-10-01 | 76 | 8d | start no earlier than 2010-09-28 |
| 78 | 1.3.5.7 | **Desarrollar Modulo de ABM** | 11d | 2010-08-11 | 2010-08-24 | 42 | 0d |  |
| 79 |  | Desarrollar ABM de Artículos ( generación de códigos de barras ) | 9d | 2010-08-11 | 2010-08-21 | 42 | 0d | start no earlier than 2010-08-11 |
| 80 |  | Desarrollar ABM de Usuarios | 9d | 2010-08-11 | 2010-08-21 | 42 | 0d | finish no earlier than 2010-08-21 |
| 81 |  | Desarrollar ABM de Cajas | 9d | 2010-08-11 | 2010-08-21 | 42 | 0d | finish no earlier than 2010-08-21 |
| 82 |  | Desarrollar ABM de Roles | 9d | 2010-08-11 | 2010-08-21 | 42 | 0d | finish no earlier than 2010-08-21 |
| 83 |  | Realizar pruebas unitarias al modulo | 2d | 2010-08-22 | 2010-08-24 | 79, 80, 81, 82 | 0d | must start on 2010-08-22 |
| 84 | 1.3.6 | **Fase 5: Testing** | 6d | 2010-10-02 | 2010-10-08 | 50 | 8d |  |
| 85 |  | Realizar pruebas de integración Modulo Accesos al Sistema | 6d | 2010-10-02 | 2010-10-08 | 50 | 8d | start no earlier than 2010-10-02 |
| 86 |  | Realizar pruebas de integración Modulo de Ventas | 6d | 2010-10-02 | 2010-10-08 | 50 | 8d | start no earlier than 2010-10-02 |
| 87 |  | Realizar pruebas de integración Modulo de Stock | 6d | 2010-10-02 | 2010-10-08 | 50 | 8d | start no earlier than 2010-10-02 |
| 88 |  | Realizar pruebas de integración Modulo de Estadísticas e indicadores | 6d | 2010-10-02 | 2010-10-08 | 50 | 8d | start no earlier than 2010-10-02 |
| 89 |  | Realizar pruebas de integración Modulo Reportes | 6d | 2010-10-02 | 2010-10-08 | 50 | 8d | start no earlier than 2010-10-02 |
| 90 |  | Realizar pruebas de integración Modulo Simulador de Compras | 6d | 2010-10-02 | 2010-10-08 | 50 | 8d | start no earlier than 2010-10-02 |
| 91 |  | Realizar pruebas de integración Modulo de ABM | 6d | 2010-10-02 | 2010-10-08 | 50 | 8d | start no earlier than 2010-10-02 |
| 92 | 1.3.7 | **Fase 6: Implementación** | 12d | 2010-10-09 | 2010-10-22 | 84 | 2d |  |
| 93 |  | Elaborar manual del usuario | 6d | 2010-10-09 | 2010-10-15 | 84 | 8d | finish no earlier than 2010-10-15 |
| 94 |  | Elaborar el Manual de instalación | 6d | 2010-10-16 | 2010-10-22 | 84 | 2d | finish no earlier than 2010-10-22 |
| 95 | 1.4 | **Fase Cierre** | 6d | 2010-10-23 | 2010-10-29 | 16 |  |  |
| 96 |  | Elaborar documento de cierre del proyecto | 2d | 2010-10-26 | 2010-10-27 | 16 | 0d | start no earlier than 2010-10-26 |
| 97 |  | Elaborar documento de lecciones aprendidas | 2d | 2010-10-28 | 2010-10-29 | 96 | 0d | start no earlier than 2010-10-28 |
| 98 | 1.5 | **Fase Seguimiento y Control** | 152d | 2010-04-30 | 2010-10-29 |  | 0d |  |
| 99 |  | Presentar informe de avance: Gantt | 1d | 2010-05-07 | 2010-05-07 |  | 0d | must start on 2010-05-07 |
| 100 |  | Presentar informe de avance: Plan de Gestión de Proyecto Preliminar | 1d | 2010-05-14 | 2010-05-14 |  | 0d | must start on 2010-05-14 |
| 101 |  | Presentar informe de avance: Plan de Gestión de Proyecto | 1d | 2010-05-21 | 2010-05-21 |  | 0d | must start on 2010-05-21 |
| 102 |  | Presentar informe de avance: Manual de usuario | 1d | 2010-10-15 | 2010-10-15 |  | 0d | must start on 2010-10-15 |
| 103 |  | Presentar informe de avance: Manual de instalación | 1d | 2010-10-22 | 2010-10-22 |  | 0d | must start on 2010-10-22 |
| 104 |  | Presentar informe de avance: Documento pruebas de integración | 1d | 2010-09-10 | 2010-09-10 |  | 40d | start no earlier than 2010-09-10 |
| 105 |  | Presentar informe de avance:Diagrama de clases | 1d | 2010-07-09 | 2010-07-09 |  | 0d | must start on 2010-07-09 |
| 106 |  | Presentar informe de avance: Diagrama de entidad relación | 1d | 2010-07-09 | 2010-07-09 |  | 0d | must start on 2010-07-09 |
| 107 |  | Presentar informe de avance: Diccionario de datos | 1d | 2010-07-09 | 2010-07-09 |  | 0d | must start on 2010-07-09 |
| 108 |  | Presentar informe de avance: Diagrama componentes | 1d | 2010-07-09 | 2010-07-09 |  | 0d | must start on 2010-07-09 |
| 109 |  | Presentar informe de avance: Diagrama de despliegue | 1d | 2010-07-16 | 2010-07-16 |  | 0d | must start on 2010-07-16 |
| 110 |  | Presentar informe de avance: Documento de arquitectura de software | 1d | 2010-07-16 | 2010-07-16 |  | 0d | must start on 2010-07-16 |
| 111 |  | Presentar informe de avance: Diseño de interfaces | 1d | 2010-07-16 | 2010-07-16 |  | 0d | must start on 2010-07-16 |
| 112 |  | Presentar informe de avance: Código fuente del Modulo de Accesos al Sistema | 1d | 2010-07-23 | 2010-07-23 |  | 0d | must start on 2010-07-23 |
| 113 |  | Presentar informe de avance: Documento de pruebas unitarias Modulo de Accesos al Sistema | 1d | 2010-07-23 | 2010-07-23 |  | 0d | must start on 2010-07-23 |
| 114 |  | Presentar informe de avance: Documento de pruebas unitarias Modulo de Ventas | 1d | 2010-07-30 | 2010-07-30 |  | 0d | must start on 2010-07-30 |
| 115 |  | Presentar informe de avance: Código fuente del Modulo de Venta | 1d | 2010-07-30 | 2010-07-30 |  | 0d | must start on 2010-07-30 |
| 116 |  | Presentar informe de avance: Documento de pruebas unitarias Modulo de Stock | 1d | 2010-08-06 | 2010-08-06 |  | 0d | must start on 2010-08-06 |
| 117 |  | Presentar informe de avance: Código fuente del Modulo de Stock | 1d | 2010-08-06 | 2010-08-06 |  | 0d | must start on 2010-08-06 |
| 118 |  | Presentar informe de avance: Preliminar del modulo de estadisticas e indicadores | 1d | 2010-08-13 | 2010-08-13 |  | 0d | must start on 2010-08-13 |
| 119 |  | Presentar informe de avance: Documento de pruebas unitarias de Estadisticas e indicadores | 1d | 2010-08-20 | 2010-08-20 |  | 0d | must start on 2010-08-20 |
| 120 |  | Presentar informe de avance: Código fuente del Modulo de Estadísticas e indicadores | 1d | 2010-08-20 | 2010-08-20 |  | 0d | must start on 2010-08-20 |
| 121 |  | Presentar informe de avance: Documento de pruebas unitarias del Modulo ABM | 1d | 2010-08-27 | 2010-08-27 |  | 50d | start no earlier than 2010-08-27 |
| 122 |  | Presentar informe de avance: Código fuente del Modulo ABM | 1d | 2010-08-27 | 2010-08-27 |  | 50d | start no earlier than 2010-08-27 |
| 123 |  | Presentar informe de avance: Preliminar del Modulo de Reportes | 1d | 2010-08-27 | 2010-08-27 |  | 0d | must start on 2010-08-27 |
| 124 |  | Presentar informe de avance: Preliminar del Modulo de Reportes | 1d | 2010-09-03 | 2010-09-03 |  | 0d | must start on 2010-09-03 |
| 125 |  | Presentar informe de avance: Preliminar del modulo de simulacion | 1d | 2010-09-10 | 2010-09-10 |  | 0d | must start on 2010-09-10 |
| 126 |  | Presentar informe de avance: Código fuente del Modulo de reportes | 1d | 2010-09-17 | 2010-09-17 |  | 0d | must start on 2010-09-17 |
| 127 |  | Presentar informe de avance: Documento de pruebas unitarias del Modulo de reportes | 1d | 2010-09-17 | 2010-09-17 |  | 0d | must start on 2010-09-17 |
| 128 |  | Presentar informe de avance: Preliminar del Modulo de simulación | 1d | 2010-09-24 | 2010-09-24 |  | 0d | must start on 2010-09-24 |
| 129 |  | Presentar informe de avance: Código fuente del Modulo Simulador de compras | 1d | 2010-10-01 | 2010-10-01 |  | 0d | must start on 2010-10-01 |
| 130 |  | Presentar informe de avance: Documento de pruebas unitarias del Modulo Simulador de compras | 1d | 2010-10-01 | 2010-10-01 |  | 0d | must start on 2010-10-01 |
| 131 |  | Presentar informe de avance : Documento de Análisis Funcional | 1d | 2010-07-02 | 2010-07-02 |  | 0d | must start on 2010-07-02 |
| 132 |  | Presentar informe de avance: Casos de uso modulo de Reportes | 1d | 2010-06-25 | 2010-06-25 |  | 0d | must start on 2010-06-25 |
| 133 |  | Presentar informe de avance:Casos de uso Modulo de Stock y Modulo de Venta | 1d | 2010-06-18 | 2010-06-18 |  | 0d | must start on 2010-06-18 |
| 134 |  | Presentar informe de avance: Casos de uso del modulo de accesos al sistema | 1d | 2010-06-11 | 2010-06-11 |  | 0d | must start on 2010-06-11 |
| 135 |  | Presentar informe de avance : Documento de infraestructura | 1d | 2010-06-04 | 2010-06-04 |  | 0d | must start on 2010-06-04 |
| 136 |  | Presentar informe de avance: Presentacion Comercial PPT | 1d | 2010-06-04 | 2010-06-04 |  | 0d | must start on 2010-06-04 |
| 137 |  | Presentar informe de avance: Documento de capacitacion en UML | 1d | 2010-05-28 | 2010-05-28 |  | 0d | must start on 2010-05-28 |
| 138 |  | Presentar informe de avance: Matriz de roles y responsabilidades | 1d | 2010-05-28 | 2010-05-28 |  | 0d | must start on 2010-05-28 |
| 139 |  | Presentar informe de avance: Acta de Proyecto | 1d | 2010-04-30 | 2010-04-30 |  | 0d | must start on 2010-04-30 |
| 140 |  | Presentar informe de avance: Documento de lecciones aprendidas | 1d | 2010-10-29 | 2010-10-29 |  | 0d | must start on 2010-10-29 |

| ID | Task | Duration | Start | Finish | Total float | Constraint |
| --- | --- | --- | --- | --- | --- | --- |
| 141 | Presentar informe de avance: Acta de cierre del proyecto | 1d | 2010-10-29 | 2010-10-29 | 0d | must start on 2010-10-29 |

## Version 2 (saved 2010-05-27)

Note of the change: Mas actualizado

Last finish stays 2010-10-29.

Added:

| ID | Task | Duration | Start | Finish | Predecessors | Constraint |
| --- | --- | --- | --- | --- | --- | --- |
| 7 | Acta de Proyecto | 1d | 2010-04-30 | 2010-04-30 | 6 | start no earlier than 2010-04-30 |
| 17 | Plan de gestión de proyecto | 1d | 2010-05-21 | 2010-05-21 | 16 | start no earlier than 2010-05-21 |
| 48 | Plan de Gestión Proyecto | 1d | 2010-07-15 | 2010-07-15 | 41, 42, 43, 44, 45, 46, 47 | start no earlier than 2010-07-15 |

Removed: 17 Fase 0: Inicio del proyecto.; 18 Elaboración definitiva de la matriz de responsabilidades y roles; 20 Capacitar personal en UML; 99 Presentar informe de avance: Gantt; 100 Presentar informe de avance: Plan de Gestión de Proyecto Preliminar; 101 Presentar informe de avance: Plan de Gestión de Proyecto; 102 Presentar informe de avance: Manual de usuario; 103 Presentar informe de avance: Manual de instalación; 104 Presentar informe de avance: Documento pruebas de integración; 105 Presentar informe de avance:Diagrama de clases; 106 Presentar informe de avance: Diagrama de entidad relación; 107 Presentar informe de avance: Diccionario de datos; 108 Presentar informe de avance: Diagrama componentes; 109 Presentar informe de avance: Diagrama de despliegue; 110 Presentar informe de avance: Documento de arquitectura de software; 111 Presentar informe de avance: Diseño de interfaces; 112 Presentar informe de avance: Código fuente del Modulo de Accesos al Sistema; 113 Presentar informe de avance: Documento de pruebas unitarias Modulo de Accesos al Sistema; 114 Presentar informe de avance: Documento de pruebas unitarias Modulo de Ventas; 115 Presentar informe de avance: Código fuente del Modulo de Venta; 116 Presentar informe de avance: Documento de pruebas unitarias Modulo de Stock; 117 Presentar informe de avance: Código fuente del Modulo de Stock; 118 Presentar informe de avance: Preliminar del modulo de estadisticas e indicadores; 119 Presentar informe de avance: Documento de pruebas unitarias de Estadisticas e indicadores; 120 Presentar informe de avance: Código fuente del Modulo de Estadísticas e indicadores; 121 Presentar informe de avance: Documento de pruebas unitarias del Modulo ABM; 122 Presentar informe de avance: Código fuente del Modulo ABM; 123 Presentar informe de avance: Preliminar del Modulo de Reportes; 124 Presentar informe de avance: Preliminar del Modulo de Reportes; 125 Presentar informe de avance: Preliminar del modulo de simulacion; 126 Presentar informe de avance: Código fuente del Modulo de reportes; 127 Presentar informe de avance: Documento de pruebas unitarias del Modulo de reportes; 128 Presentar informe de avance: Preliminar del Modulo de simulación; 129 Presentar informe de avance: Código fuente del Modulo Simulador de compras; 130 Presentar informe de avance: Documento de pruebas unitarias del Modulo Simulador de compras; 131 Presentar informe de avance : Documento de Análisis Funcional; 132 Presentar informe de avance: Casos de uso modulo de Reportes; 133 Presentar informe de avance:Casos de uso Modulo de Stock y Modulo de Venta; 134 Presentar informe de avance: Casos de uso del modulo de accesos al sistema; 135 Presentar informe de avance : Documento de infraestructura; 136 Presentar informe de avance: Presentacion Comercial PPT; 137 Presentar informe de avance: Documento de capacitacion en UML; 138 Presentar informe de avance: Matriz de roles y responsabilidades; 140 Presentar informe de avance: Documento de lecciones aprendidas; 141 Presentar informe de avance: Acta de cierre del proyecto

Changed:

| ID | Task | Start | Finish | Duration | Total float | Predecessors | Other |
| --- | --- | --- | --- | --- | --- | --- | --- |
| 1 | **Proyecto DailyMarket** |  |  | 169d → 170d |  |  |  |
| 6 | Elaboración de matriz de responsabilidades y roles |  | 2010-04-30 → 2010-04-29 (-1d) | 6d → 5d |  |  | constraint finish no earlier than 2010-04-30 → none |
| 9 | Elaboración de la WBS | 2010-05-08 → 2010-05-01 (-7d) | 2010-05-10 → 2010-05-07 (-3d) | 2d → 6d | 8d → 9d |  | constraint finish no earlier than 2010-05-10 → finish no earlier than 2010-05-07 |
| 10 | Elaboración de la carta Gantt | 2010-05-01 → 2010-05-08 (+7d) | 2010-05-07 → 2010-05-10 (+3d) | 6d → 2d | 10d → 7d |  | constraint finish no earlier than 2010-05-07 → finish no earlier than 2010-05-10 |
| 16 | Definir Riesgos |  | 2010-05-21 → 2010-05-20 (-1d) | 6d → 5d |  |  | constraint must start on 2010-05-15 → start no earlier than 2010-05-15 |
| 18 | **Fase Ejecución** |  |  | 127d → 128d | 1d → 0d |  |  |
| 19 | **Análisis de infraestructura de la solución** | 2010-05-29 → 2010-05-22 (-7d) |  | 7d → 14d | 0d → none | Fase 0: Inicio del proyecto. → 8 | was named Fase 1: Análisis de infraestructura de la solución |
| 20 | Elaborar Análisis de Infraestructura de Comunicaciones | 2010-05-30 → 2010-05-26 (-4d) | 2010-05-31 → 2010-05-28 (-3d) | 2d → 3d | 23d → 128d | Fase 0: Inicio del proyecto. → 8 | constraint start no earlier than 2010-05-29 → start no earlier than 2010-05-26 |
| 21 | Elaborar Análisis Infraestructura de Hardware y Software (Puestos) | 2010-05-30 → 2010-05-29 (-1d) | 2010-06-01 → 2010-05-31 (-1d) |  | 18d → 121d | Fase 0: Inicio del proyecto. → 8 | constraint start no earlier than 2010-05-30 → start no earlier than 2010-05-29 |
| 22 | Elaborar Análisis de Infraestructura de Hardware y Software (Servidores) |  |  |  | 20d → 122d | Fase 0: Inicio del proyecto. → 8 |  |
| 23 | Analizar Infraestructura de Hardware y Software (Entorno Desarrollo y Testing) | 2010-05-29 → 2010-05-22 (-7d) | 2010-05-31 → 2010-05-25 (-6d) | 2d → 3d | 0d → 129d | Fase 0: Inicio del proyecto. → 8 | constraint must start on 2010-05-29 → start no earlier than 2010-05-22 |
| 26 | **Análisis Funcional** |  |  |  | 18d → 19d |  | was named Fase 2: Análisis Funcional |
| 40 | **Diseño** |  |  |  |  |  | was named Fase 3: Diseño |
| 47 | Diseñar interfaces |  | 2010-07-16 → 2010-07-14 (-2d) | 6d → 4d | 0d → 1d |  |  |
| 49 | Elaborar PPT de la Presentación Comercial | 2010-05-24 → 2010-07-16 (+53d) | 2010-05-28 → 2010-07-16 (+49d) | 5d → 1d |  | 8 → 47 | constraint start no earlier than 2010-05-24 → start no earlier than 2010-07-16 |
| 50 | **Construcción** |  |  |  |  |  | was named Fase 4: Construcción |
| 84 | **Testing** |  |  |  |  |  | was named Fase 5: Testing |
| 92 | **Implementación** |  |  |  |  |  | was named Fase 6: Implementación |
| 98 | **Fase Seguimiento y Control** |  | 2010-10-29 → 2010-10-28 (-1d) |  |  |  |  |
| 99 | Informe de avance |  | 2010-04-30 → 2010-10-28 (+181d) | 1d → 152d |  |  | was named Presentar informe de avance: Acta de Proyecto |
